# caMOD 2.2

Schedule from MS Project, 2007-09-28 to 2008-02-12.
SAIC

## Calendars

- Standard: Mon-Fri 08:00-12:00, 13:00-17:00; Sat-Sun off.

## Resources

| Resource |
| --- |
| GuruswamiS |
| NCICB |
| Anand |
| Ulli |
| QA |
| Sima |
| DBA |
| 2nd Resource |
| Sima |
| Srini |
| Grid Resource |
| App Support |
| Systems |
| Jill |

## Schedule

| ID | WBS | Task | Type | Duration | Start | Finish | Predecessors | Total slack | Free slack | Resources | Work |
| --- | --- | --- | --- | --- | --- | --- | --- | --- | --- | --- | --- |
| 1 | 1 | **caMOD 2.4 Release** |  | 98d | 2007-09-28 | 2008-02-12 |  | 0d |  |  | 1192h |
| 2 | 1.1 | **Inception Phase** |  | 16d | 2007-09-28 | 2007-10-19 |  | 0d |  |  | 48h |
| 3 | 1.1.1 | Use Case and Design Doc (caBIG template) |  | 2w | 2007-09-28 | 2007-10-11 |  | 0d |  | Sima [50%] | 40h |
| 4 | 1.1.2 | Review use cases / design with the "Review Board" |  | 6d | 2007-10-12 | 2007-10-19 | 3 | 0d |  | Sima | 8h |
| 5 | 1.2 | Milestone: Completed Design document | milestone | 0d | 2007-10-19 | 2007-10-19 | 4 | 0d |  | Anand |  |
| 6 | 1.3 | **Elaboration Phase** |  | 23d | 2007-10-22 | 2007-11-21 |  | 0d |  |  | 176h |
| 7 | 1.3.1 | Incorporate changes to the Object Model |  | 3d | 2007-10-22 | 2007-10-24 | 5 | 0d |  | Ulli | 24h |
| 8 | 1.3.2 | Make code changes due to Object Model changes |  | 5d | 2007-10-25 | 2007-10-31 | 7 | 0d |  | Sima | 40h |
| 9 | 1.3.3 | Milestone: Soft Freeze Object Model |  | 2d | 2007-11-01 | 2007-11-02 | 8 | 0d |  | Ulli | 16h |
| 10 | 1.3.4 | Round Trip, Import XMI into EA |  | 2d | 2007-11-05 | 2007-11-06 | 9 | 54d | 0d | Ulli | 16h |
| 11 | 1.3.5 | Register Model in caDSR |  | 11d | 2007-11-07 | 2007-11-21 | 10 | 54d |  | Ulli | 80h |
| 12 | 1.4 | Milestone: Model Registered in CADSR | milestone | 0d | 2007-09-28 | 2007-09-28 |  | 58d |  |  |  |
| 13 | 1.5 | **iteration 1:** |  | 82d | 2007-10-22 | 2008-02-12 |  | 0d |  |  | 968h |
| 14 | 1.5.1 | **EVSTree Application-side work** |  | 26d | 2007-11-05 | 2007-12-10 |  | 0d |  | Sima | 400h |
| 15 | 1.5.1.1 | **Implementation and Testing** |  | 26d | 2007-11-05 | 2007-12-10 |  | 0d |  | Sima | 232h |
| 16 | 1.5.1.1.1 | Cancelling selection gives error messages in Mozilla and no response in IE (#7451) |  | 7d | 2007-11-05 | 2007-11-13 | 9 | 0d |  | Sima | 32h |
| 17 | 1.5.1.1.2 | Crash - when trying to select search result page crashes (#6389) |  | 1.4w | 2007-11-14 | 2007-11-22 | 16 | 0d |  | Sima | 32h |
| 18 | 1.5.1.1.3 | Search does not work for rat anatomy (#7790) |  | 3d | 2007-11-23 | 2007-11-27 | 17 | 0d |  |  |  |
| 19 | 1.5.1.1.4 | Search does not work for zebrafish vocabularies (#7387) |  | 3d | 2007-11-28 | 2007-11-30 | 18 | 0d |  |  |  |
| 20 | 1.5.1.1.5 | Alternate search terms are only shown when matches in the existing trees are found (#9277) |  | 1d | 2007-12-03 | 2007-12-03 | 19 | 0d |  |  |  |
| 21 | 1.5.1.1.6 | Tree doesn't jump to the highlighted term after performing search (#9274) |  | 5d | 2007-12-04 | 2007-12-10 | 20 | 0d |  |  |  |
| 22 | 1.5.2 | **caMOD - caELMIR Integration Tasks** |  | 22d | 2007-12-11 | 2008-01-09 |  | 0d |  |  | 160h |
| 23 | 1.5.2.1 | Implement Therapy Screen for caELMIR data |  | 2.2w | 2007-12-11 | 2007-12-25 | 21 | 0d |  | Sima | 80h |
| 24 | 1.5.2.2 | Connecting to caELMIR to return results |  | 1.2w | 2007-12-26 | 2008-01-02 | 23 | 0d |  | Sima | 40h |
| 25 | 1.5.2.3 | Misc tasks for integration |  | 5d | 2008-01-03 | 2008-01-09 | 24 | 0d |  | Sima | 40h |

| ID | WBS | Task | Type | Duration | Start | Finish | Predecessors | Total slack | Free slack | Resources | Work |
| --- | --- | --- | --- | --- | --- | --- | --- | --- | --- | --- | --- |
| 26 | 1.5.3 | **Testing** |  | 82d | 2007-10-22 | 2008-02-12 |  | 0d |  |  | 408h |
| 27 | 1.5.3.1 | Deploy iteration on DEV Server |  | 2d | 2008-01-10 | 2008-01-11 | 25 | 0d |  | Sima | 16h |
| 28 | 1.5.3.2 | Test on DEV tier |  | 1w | 2008-01-14 | 2008-01-18 | 27 | 0d |  | Ulli; Sima | 80h |
| 29 | 1.5.3.3 | **Transition Phase** |  | 82d | 2007-10-22 | 2008-02-12 |  | 0d |  |  | 312h |
| 30 | 1.5.3.3.1 | **QA** |  | 10d | 2007-10-22 | 2007-11-02 | 5 | 67d |  | QA | 160h |
| 31 | 1.5.3.3.1.1 | Finalize Testplan |  | 1w | 2007-10-22 | 2007-10-26 | 5 | 67d | 0d | QA | 40h |
| 32 | 1.5.3.3.1.2 | Finalize Test Cases |  | 1w | 2007-10-29 | 2007-11-02 | 31 | 67d |  | QA | 40h |
| 33 | 1.5.3.3.2 | **Deploy** |  | 17d | 2008-01-21 | 2008-02-12 |  | 0d |  |  | 152h |
| 34 | 1.5.3.3.2.1 | **QA Server Deployment** |  | 10d | 2008-01-21 | 2008-02-01 | 28 | 0d |  |  | 80h |
| 35 | 1.5.3.3.2.1.1 | QA Testing |  | 2w | 2008-01-21 | 2008-02-01 |  | 0d |  | QA | 80h |
| 36 | 1.5.3.3.2.2 | **Staging Server Deployment** |  | 5d | 2008-02-04 | 2008-02-08 | 35 | 0d |  |  | 40h |
| 37 | 1.5.3.3.2.2.1 | Staging Testing |  | 1w | 2008-02-04 | 2008-02-08 |  | 0d |  | Ulli | 40h |
| 38 | 1.5.3.3.2.3 | **Production Server Deployment** |  | 2d | 2008-02-11 | 2008-02-12 | 37 | 0d |  | Sima | 32h |
| 39 | 1.5.3.3.2.3.1 | Production Verification |  | 2d | 2008-02-11 | 2008-02-12 |  | 0d |  | Ulli | 16h |
| 40 | 1.5.3.4 | caMOD 2.4 - Closeout | milestone | 0d | 2008-02-12 | 2008-02-12 | 39 | 0d |  |  |  |
